# NeuGantt

How a schedule from MS Project changed from version to version. A marks actual dates.

## Version 1 (saved 2016-09-08)

Note of the change: neue psp, neue gantt

| ID | WBS | Task | Duration | Start | Finish | Predecessors | Total float | Constraint |
| --- | --- | --- | --- | --- | --- | --- | --- | --- |
| 1 | 1 | **Vorbereitung** | 1.75d | 2016-08-30 08:00 | 2016-08-31 15:00 |  | 15d |  |
| 2 | 1.1 | **Recherche über Technologien** | 0.5d | 2016-08-30 15:00 | 2016-08-31 10:00 |  | 20.88d |  |
| 3 |  | UWP | 0.5d | 2016-08-30 15:00 | 2016-08-31 10:00 | 8 | 20.88d |  |
| 4 |  | .NET Core | 0.5d | 2016-08-30 15:00 | 2016-08-31 10:00 | 8 | 20.88d |  |
| 5 |  | SQLite | 0.5d | 2016-08-30 15:00 | 2016-08-31 10:00 | 8 | 20.88d |  |
| 6 |  | Recherche über KanBan | 0.25d | 2016-08-30 15:00 | 2016-08-30 17:00 | 8 | 21.12d |  |
| 7 |  | Idee | 0.25d | 2016-08-30 08:00 | 2016-08-30 10:00 |  | 20.38d |  |
| 8 |  | Ideensammlung | 0.5d | 2016-08-30 10:00 | 2016-08-30 15:00 | 7 | 20.38d |  |
| 9 |  | Besprechen der Ideen | 1d | 2016-08-30 15:00 | 2016-08-31 15:00 | 8 | 20.38d |  |
| 10 | 2 | **Meeting** | 16.25d | 2016-09-06 08:00 | 2016-09-28 10:00 |  | 0.75d |  |
| 11 |  | Meeting 0 | 1d | 2016-09-06 08:00 | 2016-09-06 17:00 |  | 16d | start no earlier than 2016-09-06 08:00 |
| 12 |  | Meeting 1 | 2h | 2016-09-14 08:00 | 2016-09-14 10:00 |  | 10.75d | start no earlier than 2016-09-14 08:00 |
| 13 |  | Meeting 2 | 2h | 2016-09-21 08:00 | 2016-09-21 10:00 |  | 5.75d | start no earlier than 2016-09-21 08:00 |
| 14 |  | Meeting 3 | 2h | 2016-09-28 08:00 | 2016-09-28 10:00 |  | 0.75d | start no earlier than 2016-09-28 08:00 |
| 15 | 3 | **Organisatorisches** | 21.88d | 2016-08-30 10:00 | 2016-09-29 09:00 |  | 0d |  |
| 16 |  | PSP erstellen | 1d | 2016-08-31 15:00 | 2016-09-01 15:00 | 9 | 17.98d |  |
| 17 |  | Beschreibung der Arbeitspakete | 0.4d | 2016-09-01 15:00 | 2016-09-02 09:12 | 16 | 17.98d |  |
| 18 | 3.3 | **Protokoll** | 16.12d | 2016-09-07 08:00 | 2016-09-29 09:00 |  | 0d |  |
| 19 |  | Protokoll 0 | 0.12d | 2016-09-07 08:00 | 2016-09-07 09:00 | 11 | 16d | start no earlier than 2016-09-06 08:00 |
| 20 |  | Protokoll 1 | 1h | 2016-09-15 08:00 | 2016-09-15 09:00 | 12 | 10d | start no earlier than 2016-09-15 08:00 |
| 21 |  | Protokoll 2 | 1h | 2016-09-22 08:00 | 2016-09-22 09:00 | 13 | 5d | start no earlier than 2016-09-22 08:00 |
| 22 |  | Protokoll 3 | 1h | 2016-09-29 08:00 | 2016-09-29 09:00 | 14 | 0d | start no earlier than 2016-09-29 08:00 |
| 23 |  | Projektdefinition schreiben | 0.38d | 2016-08-30 10:00 | 2016-08-30 14:00 | 7 | 21.5d |  |
| 24 |  | Zeitplan erstellen | 1d | 2016-09-02 09:12 | 2016-09-05 09:12 | 17 | 17.98d |  |
| 25 | 4 | **Assets** | 1d | 2016-08-31 15:00 | 2016-09-01 15:00 |  | 19.38d |  |
| 26 |  | Logo erstellen/besorgen | 1d | 2016-08-31 15:00 | 2016-09-01 15:00 | 9 | 19.38d |  |
| 27 | 5 | **Entwurf** | 0.5d | 2016-08-31 15:00 | 2016-09-01 10:00 |  | 15d |  |
| 28 |  | Datenmodell erstellen | 0.31d | 2016-08-31 15:00 | 2016-09-01 08:30 | 9 | 20.06d |  |
| 29 |  | Grobe Skizzen von UI anfertigen | 0.12d | 2016-08-31 15:00 | 2016-08-31 16:00 | 9 | 20.25d |  |
| 30 |  | Programmablauf beschreiben | 0.5d | 2016-08-31 15:00 | 2016-09-01 10:00 | 9 | 19.88d |  |
| 31 | 6 | **Konzeption** | 2.5d? | 2016-08-30 10:00 | 2016-09-01 15:00 |  | 17d |  |
| 32 | 6.1 | **Skizzen erstellen** | 0.06d? | 2016-08-31 16:00 | 2016-08-31 16:30 |  | 19.19d |  |
| 33 |  | Anmeldebildschirm | 0.06d? | 2016-08-31 16:00 | 2016-08-31 16:30 | 29 | 19.19d |  |
| 34 |  | Registrierungsbildschirm | 0.06d? | 2016-08-31 16:00 | 2016-08-31 16:30 | 29 | 19.19d |  |
| 35 |  | Main Menu | 0.06d? | 2016-08-31 16:00 | 2016-08-31 16:30 | 29 | 19.19d |  |
| 36 |  | Boardansicht | 0.06d? | 2016-08-31 16:00 | 2016-08-31 16:30 | 29 | 19.19d |  |
| 37 |  | Teamverwaltungsansicht | 0.06d? | 2016-08-31 16:00 | 2016-08-31 16:30 | 29 | 19.19d |  |
| 38 |  | Board-Einstellungen(Gruppenleiter) | 0.06d? | 2016-08-31 16:00 | 2016-08-31 16:30 | 29 | 19.19d |  |
| 39 |  | To-Do-Ansicht | 0.06d? | 2016-08-31 16:00 | 2016-08-31 16:30 | 29 | 19.19d |  |
| 40 |  | In-Progress-Ansicht | 0.06d? | 2016-08-31 16:00 | 2016-08-31 16:30 | 29 | 19.19d |  |
| 41 |  | Done-Ansicht | 0.06d? | 2016-08-31 16:00 | 2016-08-31 16:30 | 29 | 19.19d |  |
| 42 |  | Einzel Ticket-Ansicht | 0.06d | 2016-08-31 16:00 | 2016-08-31 16:30 | 29 | 19.19d |  |
| 43 | 6.2 | **Standards festlegen** | 1.69d? | 2016-08-30 10:00 | 2016-08-31 16:30 |  | 20.19d |  |
| 44 |  | Codestandards | 0.06d? | 2016-08-31 15:00 | 2016-08-31 15:30 | 9 | 20.31d |  |
| 45 |  | Verwendete Technologien | 0.06d? | 2016-08-30 10:00 | 2016-08-30 10:30 | 7 | 21.81d |  |
| 46 |  | GUI Farben | 0.06d? | 2016-08-31 16:00 | 2016-08-31 16:30 | 29 | 20.19d |  |
| 47 |  | Backend - Routen festlegen | 0.5d? | 2016-09-01 10:00 | 2016-09-01 15:00 | 30 | 15d |  |
| 48 | 7 | **Realisierung** | 5.19d? | 2016-08-31 16:30 | 2016-09-08 09:00 |  | 15d |  |
| 49 | 7.1 | **UI implementieren** | 1d? | 2016-08-31 16:30 | 2016-09-01 16:30 |  | 19.19d |  |
| 50 |  | Anmeldebildschirm | 1d? | 2016-08-31 16:30 | 2016-09-01 16:30 | 33 | 19.19d |  |
| 51 |  | Registrierungsbildschirm | 1d? | 2016-08-31 16:30 | 2016-09-01 16:30 | 34 | 19.19d |  |
| 52 |  | Main Menu | 1d? | 2016-08-31 16:30 | 2016-09-01 16:30 | 35 | 19.19d |  |
| 53 |  | Boardansicht | 1d? | 2016-08-31 16:30 | 2016-09-01 16:30 | 36 | 19.19d |  |
| 54 |  | Teamverwaltungsansicht | 1d? | 2016-08-31 16:30 | 2016-09-01 16:30 | 37 | 19.19d |  |
| 55 |  | Board-Einstellungen(Gruppenleiter) | 1d? | 2016-08-31 16:30 | 2016-09-01 16:30 | 38 | 19.19d |  |
| 56 |  | To-Do-Ansicht | 1d? | 2016-08-31 16:30 | 2016-09-01 16:30 | 39 | 19.19d |  |
| 57 |  | In-Progress-Ansicht | 1d? | 2016-08-31 16:30 | 2016-09-01 16:30 | 40 | 19.19d |  |
| 58 |  | Done-Ansicht | 1d? | 2016-08-31 16:30 | 2016-09-01 16:30 | 41 | 19.19d |  |
| 59 |  | Einzel Ticket-Ansicht | 1d | 2016-08-31 16:30 | 2016-09-01 16:30 | 42 | 19.19d |  |
| 60 | 7.2 | **Backend implementieren** | 1.94d? | 2016-09-01 08:30 | 2016-09-02 17:00 |  | 15.69d |  |
| 61 |  | Datenbankmodell umsetzen | 0.12d? | 2016-09-01 08:30 | 2016-09-01 09:30 | 28 | 19.56d |  |
| 62 |  | Entity Framework umsetzen | 0.38d? | 2016-09-01 09:30 | 2016-09-01 13:30 | 61 | 19.56d |  |
| 63 |  | Routen implementieren | 1.25d | 2016-09-01 15:00 | 2016-09-02 17:00 | 47 | 15d |  |
| 64 |  | Logik implementieren | 3.12d? | 2016-09-05 08:00 | 2016-09-08 09:00 | 63 | 15d |  |

## Version 2 (saved 2016-09-13)

Note of the change: Gantt überabreitet

Last finish 2016-09-29 → 2016-10-03 (+4d).

Added:

| ID | Task | Duration | Start | Finish | Predecessors | Constraint | Resources |
| --- | --- | --- | --- | --- | --- | --- | --- |
| 10 | **Workshop** | 23d | 2016-08-30 08:00 | 2016-09-29 17:00 |  |  |  |
| 11 | Workshop 1 | 1d | 2016-08-30 08:00 | 2016-08-30 17:00 |  |  | LN; SS |
| 12 | Workshop 2 | 1d | 2016-09-01 08:00 | 2016-09-01 17:00 |  | start no earlier than 2016-09-01 08:00 | LN; SS |
| 13 | Workshop 3 | 1d | 2016-09-08 08:00 | 2016-09-08 17:00 |  | start no earlier than 2016-09-08 08:00 | LN; SS |
| 14 | Workshop 4 | 1d | 2016-09-13 08:00 | 2016-09-13 17:00 |  | start no earlier than 2016-09-13 08:00 | LN; SS |
| 15 | Workshop 5 | 1d | 2016-09-15 08:00 | 2016-09-15 17:00 |  | start no earlier than 2016-09-15 08:00 | LN; SS |
| 16 | Workshop 6 | 1d | 2016-09-20 08:00 | 2016-09-20 17:00 |  | start no earlier than 2016-09-20 08:00 | LN; SS |
| 17 | Workshop 7 | 1d | 2016-09-22 08:00 | 2016-09-22 17:00 |  | start no earlier than 2016-09-22 08:00 | LN; SS |
| 18 | Workshop 8 | 1d | 2016-09-27 08:00 | 2016-09-27 17:00 |  | start no earlier than 2016-09-27 08:00 | LN; SS |
| 19 | Workshop 9 | 1d | 2016-09-29 08:00 | 2016-09-29 17:00 |  | start no earlier than 2016-09-29 08:00 | LN; SS |
| 50 | Beginn Realisierung | 0d | 2016-09-14 08:00 | 2016-09-14 08:00 |  | start no earlier than 2016-09-14 08:00 |  |
| 53 | Anmeldebildschirm Logik | 0.38d? | 2016-09-14 11:30 | 2016-09-14 15:30 | 52 |  | SS |
| 55 | Registrierungsbildschirm Logik | 0.25d? | 2016-09-16 08:00 | 2016-09-16 10:00 | 54, 15 |  | SS |
| 56 | Hauptmaske | 0.25d? | 2016-09-16 10:00 | 2016-09-16 12:00 | 55 |  | SS |
| 59 | Teamverwaltungsansicht Logik | 0.75d? | 2016-09-21 10:00 | 2016-09-21 17:00 | 58, 16, 23 |  | SS |
| 60 | Board-Einstellungen | 0.25d? | 2016-09-23 08:00 | 2016-09-23 10:00 | 59, 17 |  | SS |
| 63 | To-Do-Ansicht Logik | 0.38d? | 2016-09-23 15:00 | 2016-09-26 09:00 | 62 |  | SS |
| 65 | In-Progress-Ansicht Logik | 0.38d? | 2016-09-26 11:00 | 2016-09-26 15:00 | 64 |  | SS |
| 67 | Done-Ansicht Logik | 0.25d? | 2016-09-28 08:00 | 2016-09-28 10:00 | 66, 18 |  | SS |
| 69 | Einzel Ticket-Ansicht Logik | 0.75d | 2016-09-28 15:00 | 2016-09-29 12:00 | 68 |  | SS |
| 76 | **Präsentation** | 1.5d? | 2016-09-29 08:00 | 2016-09-30 12:00 |  |  |  |
| 77 | Präsentation erstellen | 0.38d? | 2016-09-29 08:00 | 2016-09-29 11:00 | 75 | start no earlier than 2016-09-29 08:00 | LN; SS |
| 78 | Präsentation halten | 0.5d | 2016-09-30 08:00 | 2016-09-30 12:00 | 77 | start no earlier than 2016-09-30 08:00 | LN; SS |
| 79 | Projekt Ende | 0d | 2016-09-30 08:00 | 2016-09-30 08:00 |  | start no earlier than 2016-09-30 08:00 |  |

Removed: 18 Protokoll; 19 Protokoll 0; 20 Protokoll 1; 21 Protokoll 2; 22 Protokoll 3; 35 Main Menu; 47 Backend - Routen festlegen; 53 Boardansicht; 64 Logik implementieren

Changed:

| ID | Task | Start | Finish | Duration | Total float | Predecessors | Other |
| --- | --- | --- | --- | --- | --- | --- | --- |
| 1 | **Vorbereitung** |  | 2016-08-31 15:00 → 2016-09-01 09:00 (+1d) | 1.75d → 2.12d | 15d → 18.81d |  |  |
| 3 | Ideensammlung |  | 2016-08-30 15:00 → 2016-08-30 14:00 | 0.5d → 0.38d | 20.38d → 18.81d |  |  |
| 4 | Besprechen der Ideen | 2016-08-30 15:00 → 2016-08-30 14:00 | 2016-08-31 15:00 → 2016-08-30 15:00 (-1d) | 1d → 0.12d | 20.38d → 18.81d |  |  |
| 5 | Recherche über KanBan |  | 2016-08-30 17:00 → 2016-08-31 09:00 (+1d) | 0.25d → 0.38d | 21.12d → 18.81d | 3 → 4 |  |
| 6 | **Recherche über Technologien** | 2016-08-30 15:00 → 2016-08-31 09:00 (+1d) | 2016-08-31 10:00 → 2016-09-01 09:00 (+1d) | 0.5d → 1d | 20.88d → 18.81d |  |  |
| 7 | UWP | 2016-08-30 15:00 → 2016-08-31 09:00 (+1d) | 2016-08-31 10:00 → 2016-08-31 14:00 |  | 20.88d → 22.88d | 3 → 5 | resources LN; SS → SS; LN |
| 8 | .NET Core | 2016-08-30 15:00 → 2016-08-31 09:00 (+1d) | 2016-08-31 10:00 → 2016-08-31 14:00 |  | 20.88d → 18.81d | 3 → 5 |  |
| 9 | SQLite | 2016-08-30 15:00 → 2016-08-31 14:00 (+1d) | 2016-08-31 10:00 → 2016-09-01 09:00 (+1d) |  | 20.88d → 18.81d | 3 → 8 |  |
| 25 | **Organisatorisches** | 2016-08-30 10:00 → 2016-09-01 09:00 (+2d) | 2016-09-29 09:00 → 2016-09-02 15:00 (-27d) | 21.88d → 1.62d | 0d → 18.81d |  |  |
| 26 | PSP erstellen | 2016-08-31 15:00 → 2016-09-01 09:00 (+1d) | 2016-09-01 15:00 → 2016-09-01 16:00 | 1d → 0.75d | 17.98d → 18.81d | 4 → 9 |  |
| 27 | Beschreibung der Arbeitspakete | 2016-09-01 15:00 → 2016-09-01 16:00 | 2016-09-02 09:12 → 2016-09-02 11:00 | 0.4d → 0.5d | 17.98d → 18.81d |  |  |
| 28 | Zeitplan erstellen | 2016-09-02 09:12 → 2016-09-02 11:00 | 2016-09-05 09:12 → 2016-09-02 12:00 (-3d) | 1d → 0.12d | 17.98d → 18.81d |  |  |
| 29 | Projektdefinition schreiben | 2016-08-30 10:00 → 2016-09-02 13:00 (+3d) | 2016-08-30 14:00 → 2016-09-02 15:00 (+3d) | 0.38d → 0.25d | 21.5d → 18.81d | 2 → 28 |  |
| 30 | **Entwurf** | 2016-08-31 15:00 → 2016-09-02 15:00 (+2d) | 2016-09-01 10:00 → 2016-09-05 11:00 (+4d) | 0.5d → 0.62d | 15d → 18.81d |  |  |
| 31 | Programmablauf beschreiben | 2016-08-31 15:00 → 2016-09-02 15:00 (+2d) | 2016-09-01 10:00 → 2016-09-05 09:00 (+4d) | 0.5d → 0.38d | 19.88d → 18.81d | 4 → 29 |  |
| 32 | Grobe Skizzen von UI anfertigen | 2016-08-31 15:00 → 2016-09-05 09:00 (+5d) | 2016-08-31 16:00 → 2016-09-05 11:00 (+5d) | 0.12d → 0.25d | 20.25d → 18.81d | 4 → 31 | resources LN; SS → SS |
| 33 | Datenmodell erstellen | 2016-08-31 15:00 → 2016-09-05 09:00 (+5d) | 2016-09-01 08:30 → 2016-09-05 11:00 (+4d) | 0.31d → 0.25d | 20.06d → 20.12d | 4 → 31 | resources LN; SS → LN |
| 34 | **Konzeption** | 2016-08-30 10:00 → 2016-09-05 11:00 (+6d) | 2016-09-01 15:00 → 2016-09-06 14:30 (+5d) | 2.5d? → 1.31d? | 17d → 18.81d |  |  |
| 35 | **Skizzen erstellen** | 2016-08-31 16:00 → 2016-09-05 11:00 (+5d) | 2016-08-31 16:30 → 2016-09-06 12:00 (+6d) | 0.06d? → 1.12d? | 19.19d → 18.81d |  |  |
| 36 | Anmeldebildschirm | 2016-08-31 16:00 → 2016-09-05 11:00 (+5d) | 2016-08-31 16:30 → 2016-09-05 12:00 (+5d) | 0.06d? → 0.12d? | 19.19d → 18.81d |  |  |
| 37 | Registrierungsbildschirm | 2016-08-31 16:00 → 2016-09-05 13:00 (+5d) | 2016-08-31 16:30 → 2016-09-05 14:00 (+5d) | 0.06d? → 0.12d? | 19.19d → 18.81d | 32 → 36 |  |
| 38 | Hauptmaske | 2016-08-31 16:00 → 2016-09-05 14:00 (+5d) | 2016-08-31 16:30 → 2016-09-05 15:00 (+5d) | 0.06d? → 0.12d? | 19.19d → 18.81d | 32 → 37 | was named Boardansicht |
| 39 | Teamverwaltungsansicht | 2016-08-31 16:00 → 2016-09-05 15:00 (+5d) | 2016-08-31 16:30 → 2016-09-05 16:00 (+5d) | 0.06d? → 0.12d? | 19.19d → 18.81d | 32 → 38 |  |
| 40 | Board-Einstellungen(Gruppenleiter) | 2016-08-31 16:00 → 2016-09-05 16:00 (+5d) | 2016-08-31 16:30 → 2016-09-05 17:00 (+5d) | 0.06d? → 0.12d? | 19.19d → 18.81d | 32 → 39 |  |
| 41 | To-Do-Ansicht | 2016-08-31 16:00 → 2016-09-06 08:00 (+6d) | 2016-08-31 16:30 → 2016-09-06 09:00 (+6d) | 0.06d? → 0.12d? | 19.19d → 18.81d | 32 → 40 |  |
| 42 | In-Progress-Ansicht | 2016-08-31 16:00 → 2016-09-06 09:00 (+6d) | 2016-08-31 16:30 → 2016-09-06 10:00 (+6d) | 0.06d? → 0.12d? | 19.19d → 18.81d | 32 → 41 |  |
| 43 | Done-Ansicht | 2016-08-31 16:00 → 2016-09-06 10:00 (+6d) | 2016-08-31 16:30 → 2016-09-06 11:00 (+6d) | 0.06d? → 0.12d? | 19.19d → 18.81d | 32 → 42 |  |
| 44 | Einzel Ticket-Ansicht | 2016-08-31 16:00 → 2016-09-06 11:00 (+6d) | 2016-08-31 16:30 → 2016-09-06 12:00 (+6d) | 0.06d → 0.12d | 19.19d → 18.81d | 32 → 43 |  |
| 45 | **Standards festlegen** | 2016-08-30 10:00 → 2016-09-06 13:00 (+7d) | 2016-08-31 16:30 → 2016-09-06 14:30 (+6d) | 1.69d? → 0.19d? | 20.19d → 18.81d |  |  |
| 46 | GUI Farben | 2016-08-31 16:00 → 2016-09-06 13:00 (+6d) | 2016-08-31 16:30 → 2016-09-06 13:30 (+6d) |  | 20.19d → 18.81d | 32 → 44 | resources LN; SS → SS |
| 47 | Codestandards | 2016-08-31 15:00 → 2016-09-06 13:30 (+6d) | 2016-08-31 15:30 → 2016-09-06 14:00 (+6d) |  | 20.31d → 18.81d | 4 → 46 | resources LN; SS → LN |
| 48 | Verwendete Technologien | 2016-08-30 10:00 → 2016-09-06 14:00 (+7d) | 2016-08-30 10:30 → 2016-09-06 14:30 (+7d) |  | 21.81d → 18.81d | 2 → 47 |  |
| 49 | **Realisierung** | 2016-08-31 16:30 → 2016-09-14 08:00 (+14d) | 2016-09-08 09:00 → 2016-10-03 12:00 (+25d) | 5.19d? → 13.5d? | 15d → 0d |  |  |
| 51 | **Frontend implementieren** | 2016-08-31 16:30 → 2016-09-14 10:00 (+14d) | 2016-09-01 16:30 → 2016-09-29 12:00 (+28d) | 1d? → 11.25d? | 19.19d → 0d |  | was named UI implementieren |
| 52 | Anmeldebildschirm | 2016-08-31 16:30 → 2016-09-14 10:00 (+14d) | 2016-09-01 16:30 → 2016-09-14 11:30 (+13d) | 1d? → 0.19d? | 19.19d → 4.88d | 36 → 50, 22 | resources SS [25%] → SS |
| 54 | Registrierungsbildschirm | 2016-08-31 16:30 → 2016-09-14 15:30 (+14d) | 2016-09-01 16:30 → 2016-09-14 17:00 (+13d) | 1d? → 0.19d? | 19.19d → 4.88d | 37 → 53 | resources SS [25%] → SS |
| 57 | Hauptmaske Logik | 2016-08-31 16:30 → 2016-09-16 13:00 (+16d) | 2016-09-01 16:30 → 2016-09-16 17:00 (+15d) | 1d? → 0.5d? | 19.19d → 3.88d | Main Menu → 56 | was named Main Menu; resources SS [25%] → SS |
| 58 | Teamverwaltungsansicht | 2016-08-31 16:30 → 2016-09-19 08:00 (+19d) | 2016-09-01 16:30 → 2016-09-19 12:00 (+18d) | 1d? → 0.5d? | 19.19d → 3.88d | 39 → 57 | resources SS [25%] → SS |
| 61 | Board-Einstellungen Logik | 2016-08-31 16:30 → 2016-09-23 10:00 (+23d) | 2016-09-01 16:30 → 2016-09-23 12:00 (+22d) | 1d? → 0.25d? | 19.19d → 1.12d | 40 → 60 | was named Board-Einstellungen(Gruppenleiter); resources SS [25%] → SS |
| 62 | To-Do-Ansicht | 2016-08-31 16:30 → 2016-09-23 13:00 (+23d) | 2016-09-01 16:30 → 2016-09-23 15:00 (+22d) | 1d? → 0.25d? | 19.19d → 1.12d | 41 → 61 | resources SS [25%] → SS |
| 64 | In-Progress-Ansicht | 2016-08-31 16:30 → 2016-09-26 09:00 (+26d) | 2016-09-01 16:30 → 2016-09-26 11:00 (+25d) | 1d? → 0.25d? | 19.19d → 1.12d | 42 → 63 | resources SS [25%] → SS |
| 66 | Done-Ansicht | 2016-08-31 16:30 → 2016-09-26 15:00 (+26d) | 2016-09-01 16:30 → 2016-09-26 16:00 (+25d) | 1d? → 0.12d? | 19.19d → 1.12d | 43 → 65 | resources SS [25%] → SS |
| 68 | Einzel Ticket-Ansicht | 2016-08-31 16:30 → 2016-09-28 10:00 (+28d) | 2016-09-01 16:30 → 2016-09-28 15:00 (+27d) | 1d → 0.5d | 19.19d → 0d | 44 → 67 | resources SS [25%] → SS |
| 70 | **Backend implementieren** | 2016-09-01 08:30 → 2016-09-14 08:00 (+13d) | 2016-09-02 17:00 → 2016-10-03 12:00 (+31d) | 1.94d? → 13.5d? | 15.69d → 0d |  |  |
| 71 | Datenbankmodell umsetzen | 2016-09-01 08:30 → 2016-09-14 08:00 (+13d) | 2016-09-01 09:30 → 2016-09-14 10:00 (+13d) | 0.12d? → 0.25d? | 19.56d → 13.25d | 33 → 50 |  |
| 72 | Entity Framework umsetzen | 2016-09-01 09:30 → 2016-09-29 13:00 (+28d) | 2016-09-01 13:30 → 2016-09-30 10:00 (+29d) | 0.38d? → 0.75d? | 19.56d → 0d | 71 → 51 |  |
| 73 | Routen implementieren | 2016-09-01 15:00 → 2016-09-30 10:00 (+29d) | 2016-09-02 17:00 → 2016-10-03 12:00 (+31d) |  | 15d → 0d | Backend - Routen festlegen → 72 |  |
| 74 | **Assets** | 2016-08-31 15:00 → 2016-08-30 08:00 (-1d) | 2016-09-01 15:00 → 2016-08-30 17:00 (-2d) |  | 19.38d → 22.62d |  |  |
| 75 | Logo erstellen/besorgen | 2016-08-31 15:00 → 2016-08-30 08:00 (-1d) | 2016-09-01 15:00 → 2016-08-30 17:00 (-2d) |  | 19.38d → 22.62d | 4 → none |  |

## Version 3 (saved 2016-09-15)

Note of the change: Merge branch 'master' of https://github.com/Kulu-M/KanBan-App

Last finish 2016-10-03 → 2016-09-30 (-3d).

Changed:

| ID | Task | Start | Finish | Duration | Total float | Predecessors | Other |
| --- | --- | --- | --- | --- | --- | --- | --- |
| 1 | **Workshop** |  |  |  | 1.5d → 0.5d |  | baseline start none → 2016-08-30 08:00; baseline finish none → 2016-09-29 17:00 |
| 2 | Workshop 1 |  |  |  | 23.5d → 3.81d |  | baseline start none → 2016-08-30 08:00; baseline finish none → 2016-08-30 17:00 |
| 3 | Workshop 2 |  |  |  | 21.5d → 20.5d |  | baseline start none → 2016-09-01 08:00; baseline finish none → 2016-09-01 17:00 |
| 4 | Workshop 3 |  |  |  | 16.5d → 2.69d |  | baseline start none → 2016-09-08 08:00; baseline finish none → 2016-09-08 17:00 |
| 5 | Workshop 4 |  |  |  | 13.5d → 12.5d |  | baseline start none → 2016-09-13 08:00; baseline finish none → 2016-09-13 17:00 |
| 6 | Workshop 5 |  |  |  | 3.88d → 0d |  | baseline start none → 2016-09-15 08:00; baseline finish none → 2016-09-15 17:00 |
| 7 | Workshop 6 |  |  |  | 2.38d → 7.5d |  | baseline start none → 2016-09-20 08:00; baseline finish none → 2016-09-20 17:00 |
| 8 | Workshop 7 |  |  |  | 1.12d → -1d |  | baseline start none → 2016-09-22 08:00; baseline finish none → 2016-09-22 17:00 |
| 9 | Workshop 8 |  |  |  | 0d → 2.5d |  | baseline start none → 2016-09-27 08:00; baseline finish none → 2016-09-27 17:00 |
| 10 | Workshop 9 |  |  |  | 1.5d → 0.5d |  | baseline start none → 2016-09-29 08:00; baseline finish none → 2016-09-29 17:00 |
| 11 | **Vorbereitung** | 2016-08-30 08:00 → 2016-08-30 11:30 | 2016-09-01 09:00 → 2016-09-02 17:00 (+1d) | 2.12d → 3.56d | 18.81d → 3.81d |  | baseline start none → 2016-08-30 11:30; baseline finish none → 2016-09-02 17:00 |
| 12 | Idee | 2016-08-30 08:00 → 2016-08-30 11:30 | 2016-08-30 10:00 → 2016-08-30 14:30 |  | 16.35d → 3.81d | none → 2SS+3.5h | baseline start none → 2016-08-30 11:30; baseline finish none → 2016-08-30 14:30 |
| 13 | Ideensammlung | 2016-08-30 10:00 → 2016-08-30 14:30 | 2016-08-30 14:00 → 2016-08-31 08:30 (+1d) |  | 18.81d → 3.81d |  | baseline start none → 2016-08-30 14:30; baseline finish none → 2016-08-31 08:30 |
| 14 | Besprechen der Ideen | 2016-08-30 14:00 → 2016-08-31 08:30 (+1d) | 2016-08-30 15:00 → 2016-08-31 09:30 (+1d) |  | 18.81d → 3.81d |  | baseline start none → 2016-08-31 08:30; baseline finish none → 2016-08-31 09:30 |
| 15 | Recherche über KanBan | 2016-08-30 15:00 → 2016-08-31 09:30 (+1d) | 2016-08-31 09:00 → 2016-08-31 13:30 |  | 18.81d → 3.81d |  | baseline start none → 2016-08-31 09:30; baseline finish none → 2016-08-31 13:30 |
| 16 | **Recherche über Technologien** | 2016-08-31 09:00 → 2016-08-31 13:30 | 2016-09-01 09:00 → 2016-09-02 17:00 (+1d) | 1d → 2.44d | 18.81d → 3.81d |  | baseline start none → 2016-08-31 13:30; baseline finish none → 2016-09-02 17:00 |
| 17 | UWP | 2016-08-31 09:00 → 2016-08-31 13:30 | 2016-08-31 14:00 → 2016-09-02 17:00 (+2d) | 0.5d → 1.44d | 22.88d → 3.81d |  | baseline start none → 2016-08-31 13:30; baseline finish none → 2016-09-02 17:00 |
| 18 | .NET Core | 2016-08-31 09:00 → 2016-08-31 13:30 | 2016-08-31 14:00 → 2016-09-02 17:00 (+2d) | 0.5d → 1.44d | 18.81d → 3.81d |  | baseline start none → 2016-08-31 13:30; baseline finish none → 2016-09-02 17:00 |
| 19 | SQLite | 2016-08-31 14:00 → 2016-08-31 13:30 | 2016-09-01 09:00 → 2016-09-02 17:00 (+1d) | 0.5d → 1.44d | 18.81d → 3.81d | 18 → 15 | baseline start none → 2016-08-31 13:30; baseline finish none → 2016-09-02 17:00 |
| 20 | **Meeting** |  |  |  | 3.25d → 2.25d |  | baseline start none → 2016-09-06 08:00; baseline finish none → 2016-09-28 10:00 |
| 21 | Meeting 0 |  |  |  | 17.5d → 2.56d |  | baseline start none → 2016-09-06 08:00; baseline finish none → 2016-09-06 17:00 |
| 22 | Meeting 1 |  |  |  |  |  | baseline start none → 2016-09-14 08:00; baseline finish none → 2016-09-14 10:00 |
| 23 | Meeting 2 |  |  |  |  |  | baseline start none → 2016-09-21 08:00; baseline finish none → 2016-09-21 10:00 |
| 24 | Meeting 3 |  |  |  |  |  | baseline start none → 2016-09-28 08:00; baseline finish none → 2016-09-28 10:00 |
| 25 | **Organisatorisches** | 2016-09-01 09:00 → 2016-09-05 08:00 (+4d) | 2016-09-02 15:00 → 2016-09-07 16:00 (+5d) | 1.62d → 2.88d | 18.81d → 2.56d |  | baseline start none → 2016-09-05 08:00; baseline finish none → 2016-09-07 16:00 |
| 26 | PSP erstellen | 2016-09-01 09:00 → 2016-09-05 08:00 (+4d) | 2016-09-01 16:00 → 2016-09-05 15:00 (+4d) |  | 18.81d → 3.81d | 19 → 19, 17, 18 | baseline start none → 2016-09-05 08:00; baseline finish none → 2016-09-05 15:00 |
| 27 | Beschreibung der Arbeitspakete | 2016-09-01 16:00 → 2016-09-07 08:00 (+6d) | 2016-09-02 11:00 → 2016-09-07 12:00 (+5d) |  | 18.81d → 2.56d | 26 → 26, 21 | baseline start none → 2016-09-07 08:00; baseline finish none → 2016-09-07 12:00 |
| 28 | Zeitplan erstellen | 2016-09-02 11:00 → 2016-09-07 13:00 (+5d) | 2016-09-02 12:00 → 2016-09-07 14:00 (+5d) |  | 18.81d → 2.56d |  | baseline start none → 2016-09-07 13:00; baseline finish none → 2016-09-07 14:00 |
| 29 | Projektdefinition schreiben | 2016-09-02 13:00 → 2016-09-07 14:00 (+5d) | 2016-09-02 15:00 → 2016-09-07 16:00 (+5d) |  | 18.81d → 2.56d |  | baseline start none → 2016-09-07 14:00; baseline finish none → 2016-09-07 16:00 |
| 30 | **Entwurf** | 2016-09-02 15:00 → 2016-09-07 14:00 (+5d) | 2016-09-05 11:00 → 2016-09-12 10:00 (+7d) | 0.62d → 2.62d | 18.81d → 2.56d |  | baseline start none → 2016-09-07 14:00; baseline finish none → 2016-09-12 10:00 |
| 31 | Programmablauf beschreiben | 2016-09-02 15:00 → 2016-09-07 16:00 (+5d) | 2016-09-05 09:00 → 2016-09-09 17:00 (+4d) | 0.38d → 1.12d | 18.81d → 2.56d |  | baseline start none → 2016-09-07 16:00; baseline finish none → 2016-09-09 17:00 |
| 32 | Grobe Skizzen von UI anfertigen | 2016-09-05 09:00 → 2016-09-07 14:00 (+2d) | 2016-09-05 11:00 → 2016-09-07 16:00 (+2d) |  | 18.81d → 3.69d | 31 → 28 | baseline start none → 2016-09-07 14:00; baseline finish none → 2016-09-07 16:00 |
| 33 | Datenmodell erstellen | 2016-09-05 09:00 → 2016-09-12 08:00 (+7d) | 2016-09-05 11:00 → 2016-09-12 10:00 (+7d) |  | 20.12d → 2.56d |  | baseline start none → 2016-09-12 08:00; baseline finish none → 2016-09-12 10:00 |
| 34 | **Konzeption** | 2016-09-05 11:00 → 2016-09-07 16:00 (+2d) | 2016-09-06 14:30 → 2016-09-12 10:30 (+6d) | 1.31d? → 2.44d? | 18.81d → 2.56d |  | baseline start none → 2016-09-07 16:00; baseline finish none → 2016-09-12 10:30 |
| 35 | **Skizzen erstellen** | 2016-09-05 11:00 → 2016-09-07 16:00 (+2d) | 2016-09-06 12:00 → 2016-09-09 17:00 (+3d) | 1.12d? → 2.12d? | 18.81d → 2.69d |  | baseline start none → 2016-09-07 16:00; baseline finish none → 2016-09-09 17:00 |
| 36 | Anmeldebildschirm | 2016-09-05 11:00 → 2016-09-07 16:00 (+2d) | 2016-09-05 12:00 → 2016-09-07 17:00 (+2d) |  | 18.81d → 3.69d |  | baseline start none → 2016-09-07 16:00; baseline finish none → 2016-09-07 17:00 |
| 37 | Registrierungsbildschirm | 2016-09-05 13:00 → 2016-09-09 08:00 (+4d) | 2016-09-05 14:00 → 2016-09-09 09:00 (+4d) |  | 18.81d → 2.69d | 36 → 36, 4 | baseline start none → 2016-09-09 08:00; baseline finish none → 2016-09-09 09:00 |
| 38 | Hauptmaske | 2016-09-05 14:00 → 2016-09-09 09:00 (+4d) | 2016-09-05 15:00 → 2016-09-09 10:00 (+4d) |  | 18.81d → 2.69d |  | baseline start none → 2016-09-09 09:00; baseline finish none → 2016-09-09 10:00 |
| 39 | Teamverwaltungsansicht | 2016-09-05 15:00 → 2016-09-09 10:00 (+4d) | 2016-09-05 16:00 → 2016-09-09 11:00 (+4d) |  | 18.81d → 2.69d |  | baseline start none → 2016-09-09 10:00; baseline finish none → 2016-09-09 11:00 |
| 40 | Board-Einstellungen(Gruppenleiter) | 2016-09-05 16:00 → 2016-09-09 11:00 (+4d) | 2016-09-05 17:00 → 2016-09-09 12:00 (+4d) |  | 18.81d → 2.69d |  | baseline start none → 2016-09-09 11:00; baseline finish none → 2016-09-09 12:00 |
| 41 | To-Do-Ansicht | 2016-09-06 08:00 → 2016-09-09 13:00 (+3d) | 2016-09-06 09:00 → 2016-09-09 14:00 (+3d) |  | 18.81d → 2.69d |  | baseline start none → 2016-09-09 13:00; baseline finish none → 2016-09-09 14:00 |
| 42 | In-Progress-Ansicht | 2016-09-06 09:00 → 2016-09-09 14:00 (+3d) | 2016-09-06 10:00 → 2016-09-09 15:00 (+3d) |  | 18.81d → 2.69d |  | baseline start none → 2016-09-09 14:00; baseline finish none → 2016-09-09 15:00 |
| 43 | Done-Ansicht | 2016-09-06 10:00 → 2016-09-09 15:00 (+3d) | 2016-09-06 11:00 → 2016-09-09 16:00 (+3d) |  | 18.81d → 2.69d |  | baseline start none → 2016-09-09 15:00; baseline finish none → 2016-09-09 16:00 |
| 44 | Einzel Ticket-Ansicht | 2016-09-06 11:00 → 2016-09-09 16:00 (+3d) | 2016-09-06 12:00 → 2016-09-09 17:00 (+3d) |  | 18.81d → 2.69d |  | baseline start none → 2016-09-09 16:00; baseline finish none → 2016-09-09 17:00 |
| 45 | **Standards festlegen** | 2016-09-06 13:00 → 2016-09-12 08:00 (+6d) | 2016-09-06 14:30 → 2016-09-12 10:30 (+6d) | 0.19d? → 0.31d? | 18.81d → 2.56d |  | baseline start none → 2016-09-12 08:00; baseline finish none → 2016-09-12 10:30 |
| 46 | GUI Farben | 2016-09-06 13:00 → 2016-09-12 08:00 (+6d) | 2016-09-06 13:30 → 2016-09-12 08:30 (+6d) |  | 18.81d → 2.69d |  | baseline start none → 2016-09-12 08:00; baseline finish none → 2016-09-12 08:30 |
| 47 | Codestandards | 2016-09-06 13:30 → 2016-09-12 08:30 (+6d) | 2016-09-06 14:00 → 2016-09-12 09:00 (+6d) |  | 18.81d → 2.69d |  | baseline start none → 2016-09-12 08:30; baseline finish none → 2016-09-12 09:00 |
| 48 | Verwendete Technologien | 2016-09-06 14:00 → 2016-09-12 10:00 (+6d) | 2016-09-06 14:30 → 2016-09-12 10:30 (+6d) |  | 18.81d → 2.56d | 47 → 47, 33 | baseline start none → 2016-09-12 10:00; baseline finish none → 2016-09-12 10:30 |
| 49 | **Realisierung** |  | 2016-10-03 12:00 → 2016-09-28 17:00 (-5d) | 13.5d? → 11d? | 0d → -1d |  | baseline start none → 2016-09-14 08:00; baseline finish none → 2016-09-28 17:00 |
| 50 | Beginn Realisierung |  |  |  | 5.12d → 0.88d | none → 48 | baseline start none → 2016-09-14 08:00; baseline finish none → 2016-09-14 08:00 |
| 51 | **Frontend implementieren** | 2016-09-14 10:00 → 2016-09-14 08:00 | 2016-09-29 12:00 → 2016-09-28 17:00 (-1d) | 11.25d? → 11d? | 0d → -1d |  | baseline start none → 2016-09-14 08:00; baseline finish none → 2016-09-28 17:00 |
| 52 | Anmeldebildschirm | 2016-09-14 10:00 → 2016-09-14 08:00 | 2016-09-14 11:30 → 2016-09-14 09:30 |  | 4.88d → 1.44d | 50, 22 → 50 | baseline start none → 2016-09-14 08:00; baseline finish none → 2016-09-14 09:30 |
| 53 | Anmeldebildschirm Logik | 2016-09-14 11:30 → 2016-09-14 09:30 | 2016-09-14 15:30 → 2016-09-14 13:30 |  | 4.88d → 1.44d |  | baseline start none → 2016-09-14 09:30; baseline finish none → 2016-09-14 13:30 |
| 54 | Registrierungsbildschirm | 2016-09-14 15:30 → 2016-09-16 08:00 (+2d) | 2016-09-14 17:00 → 2016-09-16 09:30 (+2d) |  | 4.88d → 0d | 53 → 53, 6 | baseline start none → 2016-09-16 08:00; baseline finish none → 2016-09-16 09:30 |
| 55 | Registrierungsbildschirm Logik | 2016-09-16 08:00 → 2016-09-16 09:30 | 2016-09-16 10:00 → 2016-09-16 11:30 |  | 3.88d → 0d | 54, 6 → 54 | baseline start none → 2016-09-16 09:30; baseline finish none → 2016-09-16 11:30 |
| 56 | Hauptmaske | 2016-09-16 10:00 → 2016-09-16 11:30 | 2016-09-16 12:00 → 2016-09-16 14:30 |  | 3.88d → 0d |  | baseline start none → 2016-09-16 11:30; baseline finish none → 2016-09-16 14:30 |
| 57 | Hauptmaske Logik | 2016-09-16 13:00 → 2016-09-16 14:30 | 2016-09-16 17:00 → 2016-09-19 09:30 (+3d) |  | 3.88d → 0d |  | baseline start none → 2016-09-16 14:30; baseline finish none → 2016-09-19 09:30 |
| 58 | Teamverwaltungsansicht | 2016-09-19 08:00 → 2016-09-19 09:30 | 2016-09-19 12:00 → 2016-09-19 14:30 |  | 3.88d → 0d |  | baseline start none → 2016-09-19 09:30; baseline finish none → 2016-09-19 14:30 |
| 59 | Teamverwaltungsansicht Logik | 2016-09-21 10:00 → 2016-09-19 14:30 (-2d) | 2016-09-21 17:00 → 2016-09-20 11:30 (-1d) |  | 2.12d → 0d | 58, 7, 23 → 58 | baseline start none → 2016-09-19 14:30; baseline finish none → 2016-09-20 11:30 |
| 60 | Board-Einstellungen | 2016-09-23 08:00 → 2016-09-20 11:30 (-3d) | 2016-09-23 10:00 → 2016-09-21 17:00 (-2d) | 0.25d? → 1.56d? | 1.12d → 0d | 59, 8 → 59 | baseline start none → 2016-09-20 11:30; baseline finish none → 2016-09-21 17:00 |
| 61 | Board-Einstellungen Logik | 2016-09-23 10:00 → 2016-09-23 08:00 | 2016-09-23 12:00 → 2016-09-23 10:00 |  | 1.12d → -1d | 60 → 60, 8 | baseline start none → 2016-09-23 08:00; baseline finish none → 2016-09-23 10:00 |
| 62 | To-Do-Ansicht | 2016-09-23 13:00 → 2016-09-23 10:00 | 2016-09-23 15:00 → 2016-09-23 12:00 |  | 1.12d → -1d |  | baseline start none → 2016-09-23 10:00; baseline finish none → 2016-09-23 12:00 |
| 63 | To-Do-Ansicht Logik | 2016-09-23 15:00 → 2016-09-23 13:00 | 2016-09-26 09:00 → 2016-09-23 16:00 (-3d) |  | 1.12d → -1d |  | baseline start none → 2016-09-23 13:00; baseline finish none → 2016-09-23 16:00 |
| 64 | In-Progress-Ansicht | 2016-09-26 09:00 → 2016-09-23 16:00 (-3d) | 2016-09-26 11:00 → 2016-09-26 09:00 |  | 1.12d → -1d |  | baseline start none → 2016-09-23 16:00; baseline finish none → 2016-09-26 09:00 |
| 65 | In-Progress-Ansicht Logik | 2016-09-26 11:00 → 2016-09-26 09:00 | 2016-09-26 15:00 → 2016-09-26 12:00 |  | 1.12d → -1d |  | baseline start none → 2016-09-26 09:00; baseline finish none → 2016-09-26 12:00 |
| 66 | Done-Ansicht | 2016-09-26 15:00 → 2016-09-26 13:00 | 2016-09-26 16:00 → 2016-09-26 14:00 |  | 1.12d → -1d |  | baseline start none → 2016-09-26 13:00; baseline finish none → 2016-09-26 14:00 |
| 67 | Done-Ansicht Logik | 2016-09-28 08:00 → 2016-09-26 14:00 (-2d) | 2016-09-28 10:00 → 2016-09-26 16:00 (-2d) |  | 0d → -1d | 66, 9 → 66 | baseline start none → 2016-09-26 14:00; baseline finish none → 2016-09-26 16:00 |
| 68 | Einzel Ticket-Ansicht | 2016-09-28 10:00 → 2016-09-26 16:00 (-2d) | 2016-09-28 15:00 → 2016-09-27 11:00 (-1d) |  | 0d → -1d |  | baseline start none → 2016-09-26 16:00; baseline finish none → 2016-09-27 11:00 |
| 69 | Einzel Ticket-Ansicht Logik | 2016-09-28 15:00 → 2016-09-27 11:00 (-1d) | 2016-09-29 12:00 → 2016-09-28 17:00 (-1d) | 0.75d → 1.62d | 0d → -1d |  | baseline start none → 2016-09-27 11:00; baseline finish none → 2016-09-28 17:00 |
| 70 | **Backend implementieren** |  | 2016-10-03 12:00 → 2016-09-26 17:00 (-7d) | 13.5d? → 9d? | 0d → 0.88d |  | baseline start none → 2016-09-14 08:00; baseline finish none → 2016-09-26 17:00 |

| ID | Task | Start | Finish | Duration | Total float | Predecessors | Other |
| --- | --- | --- | --- | --- | --- | --- | --- |
| 71 | Datenbankmodell umsetzen |  |  |  | 13.25d → 0.88d |  | baseline start none → 2016-09-14 08:00; baseline finish none → 2016-09-14 10:00 |
| 72 | Entity Framework umsetzen | 2016-09-29 13:00 → 2016-09-14 10:00 (-15d) | 2016-09-30 10:00 → 2016-09-16 17:00 (-14d) | 0.75d? → 1.75d? | 0d → 0.88d | 51 → 71 | baseline start none → 2016-09-14 10:00; baseline finish none → 2016-09-16 17:00 |
| 73 | Routen implementieren | 2016-09-30 10:00 → 2016-09-19 08:00 (-11d) | 2016-10-03 12:00 → 2016-09-26 17:00 (-7d) | 1.25d → 5d | 0d → 0.88d |  | baseline start none → 2016-09-19 08:00; baseline finish none → 2016-09-26 17:00 |
| 74 | **Assets** | 2016-08-30 08:00 → 2016-09-27 08:00 (+28d) | 2016-08-30 17:00 → 2016-09-27 09:00 (+28d) | 1d → 0.12d | 22.62d → 0.88d |  | baseline start none → 2016-09-27 08:00; baseline finish none → 2016-09-27 09:00 |
| 75 | Logo erstellen/besorgen | 2016-08-30 08:00 → 2016-09-27 08:00 (+28d) | 2016-08-30 17:00 → 2016-09-27 09:00 (+28d) | 1d → 0.12d | 22.62d → 0.88d | none → 73 | resources none → LN; baseline start none → 2016-09-27 08:00; baseline finish none → 2016-09-27 09:00 |
| 76 | **Präsentation** | 2016-09-29 08:00 → 2016-09-28 08:00 (-1d) |  | 1.5d? → 2.5d? | 1d → 0d |  | baseline start none → 2016-09-28 08:00; baseline finish none → 2016-09-30 12:00 |
| 77 | Präsentation erstellen | 2016-09-29 08:00 → 2016-09-28 08:00 (-1d) | 2016-09-29 11:00 → 2016-09-28 17:00 (-1d) | 0.38d? → 1d? | 1.62d → -1d | 75 → 69, 75 | constraint start no earlier than 2016-09-29 08:00 → start no later than 2016-09-28 08:00; baseline start none → 2016-09-28 08:00; baseline finish none → 2016-09-28 17:00 |
| 78 | Präsentation halten |  |  |  | 1d → 0d |  | baseline start none → 2016-09-30 08:00; baseline finish none → 2016-09-30 12:00 |
| 79 | Projekt Ende |  |  |  | 1.5d → 0.5d |  | baseline start none → 2016-09-30 08:00; baseline finish none → 2016-09-30 08:00 |

## Version 4 (saved 2016-09-21)

Note of the change: Merge branch 'master' of https://github.com/Kulu-M/KanBan-App

Last finish stays 2016-09-30. Complete tasks 0 → 33.

Changed:

| ID | Task | Start | Finish | Duration | Complete | Total float | Predecessors | Other |
| --- | --- | --- | --- | --- | --- | --- | --- | --- |
| 1 | **Workshop** | 2016-08-30 08:00 A |  |  | 0% → 56% |  |  |  |
| 2 | Workshop 1 | 2016-08-30 08:00 A | 2016-08-30 17:00 A |  | 0% → 100% | 3.81d → none |  |  |
| 3 | Workshop 2 | 2016-09-01 08:00 A | 2016-09-01 17:00 A |  | 0% → 100% | 20.5d → none |  |  |
| 4 | Workshop 3 | 2016-09-08 08:00 A | 2016-09-08 17:00 A |  | 0% → 100% | 2.69d → none |  |  |
| 5 | Workshop 4 | 2016-09-13 08:00 A | 2016-09-13 17:00 A |  | 0% → 100% | 12.5d → none |  |  |
| 6 | Workshop 5 | 2016-09-15 08:00 A | 2016-09-15 17:00 A |  | 0% → 100% | 0d → none |  |  |
| 11 | **Vorbereitung** | 2016-08-30 11:30 A | 2016-09-02 17:00 A |  | 0% → 100% | 3.81d → none |  |  |
| 12 | Idee | 2016-08-30 11:30 A | 2016-08-30 14:30 A |  | 0% → 100% | 3.81d → none |  |  |
| 13 | Ideensammlung | 2016-08-30 14:30 A | 2016-08-31 08:30 A |  | 0% → 100% | 3.81d → none |  |  |
| 14 | Besprechen der Ideen | 2016-08-31 08:30 A | 2016-08-31 09:30 A |  | 0% → 100% | 3.81d → none |  |  |
| 15 | Recherche über KanBan | 2016-08-31 09:30 A | 2016-08-31 13:30 A |  | 0% → 100% | 3.81d → none |  |  |
| 16 | **Recherche über Technologien** | 2016-08-31 13:30 A | 2016-09-02 17:00 A |  | 0% → 100% | 3.81d → none |  |  |
| 17 | UWP | 2016-08-31 13:30 A | 2016-09-02 17:00 A |  | 0% → 100% | 3.81d → none |  |  |
| 18 | .NET Core | 2016-08-31 13:30 A | 2016-09-02 17:00 A |  | 0% → 100% | 3.81d → none |  |  |
| 19 | SQLite | 2016-08-31 13:30 A | 2016-09-02 17:00 A |  | 0% → 100% | 3.81d → none |  |  |
| 20 | **Meeting** | 2016-09-06 08:00 A |  |  | 0% → 71% |  |  |  |
| 21 | Meeting 0 | 2016-09-06 08:00 A | 2016-09-06 17:00 A |  | 0% → 100% | 2.56d → none |  |  |
| 22 | Meeting 1 | 2016-09-14 08:00 A | 2016-09-14 10:00 A |  | 0% → 100% | 12.25d → none |  |  |
| 25 | **Organisatorisches** | 2016-09-05 08:00 A | 2016-09-07 16:00 A |  | 0% → 100% | 2.56d → none |  |  |
| 26 | PSP erstellen | 2016-09-05 08:00 A | 2016-09-05 15:00 A |  | 0% → 100% | 3.81d → none |  |  |
| 27 | Beschreibung der Arbeitspakete | 2016-09-07 08:00 A | 2016-09-07 12:00 A |  | 0% → 100% | 2.56d → none |  |  |
| 28 | Zeitplan erstellen | 2016-09-07 13:00 A | 2016-09-07 14:00 A |  | 0% → 100% | 2.56d → none |  |  |
| 29 | Projektdefinition schreiben | 2016-09-07 14:00 A | 2016-09-07 16:00 A |  | 0% → 100% | 2.56d → none |  |  |
| 30 | **Entwurf** | 2016-09-07 14:00 A | 2016-09-12 10:00 A |  | 0% → 100% | 2.56d → none |  |  |
| 31 | Programmablauf beschreiben | 2016-09-07 16:00 A | 2016-09-09 17:00 A |  | 0% → 100% | 2.56d → none |  |  |
| 32 | Grobe Skizzen von UI anfertigen | 2016-09-07 14:00 A | 2016-09-07 16:00 A |  | 0% → 100% | 3.69d → none |  |  |
| 33 | Datenmodell erstellen | 2016-09-12 08:00 A | 2016-09-12 10:00 A |  | 0% → 100% | 2.56d → none |  |  |
| 34 | **Konzeption** | 2016-09-07 16:00 A | 2016-09-12 10:30 A |  | 0% → 100% | 2.56d → none |  |  |
| 35 | **Skizzen erstellen** | 2016-09-07 16:00 A | 2016-09-09 17:00 A |  | 0% → 100% | 2.69d → none |  |  |
| 36 | Anmeldebildschirm | 2016-09-07 16:00 A | 2016-09-07 17:00 A |  | 0% → 100% | 3.69d → none |  |  |
| 37 | Registrierungsbildschirm | 2016-09-09 08:00 A | 2016-09-09 09:00 A |  | 0% → 100% | 2.69d → none |  |  |
| 38 | Hauptmaske | 2016-09-09 09:00 A | 2016-09-09 10:00 A |  | 0% → 100% | 2.69d → none |  |  |
| 39 | Teamverwaltungsansicht | 2016-09-09 10:00 A | 2016-09-09 11:00 A |  | 0% → 100% | 2.69d → none |  |  |
| 40 | Board-Einstellungen(Gruppenleiter) | 2016-09-09 11:00 A | 2016-09-09 12:00 A |  | 0% → 100% | 2.69d → none |  |  |
| 41 | To-Do-Ansicht | 2016-09-09 13:00 A | 2016-09-09 14:00 A |  | 0% → 100% | 2.69d → none |  |  |
| 42 | In-Progress-Ansicht | 2016-09-09 14:00 A | 2016-09-09 15:00 A |  | 0% → 100% | 2.69d → none |  |  |
| 43 | Done-Ansicht | 2016-09-09 15:00 A | 2016-09-09 16:00 A |  | 0% → 100% | 2.69d → none |  |  |
| 44 | Einzel Ticket-Ansicht | 2016-09-09 16:00 A | 2016-09-09 17:00 A |  | 0% → 100% | 2.69d → none |  |  |
| 45 | **Standards festlegen** | 2016-09-12 08:00 A | 2016-09-12 10:30 A |  | 0% → 100% | 2.56d → none |  |  |
| 46 | GUI Farben | 2016-09-12 08:00 A | 2016-09-12 08:30 A |  | 0% → 100% | 2.69d → none |  |  |
| 47 | Codestandards | 2016-09-12 08:30 A | 2016-09-12 09:00 A |  | 0% → 100% | 2.69d → none |  |  |
| 48 | Verwendete Technologien | 2016-09-12 10:00 A | 2016-09-12 10:30 A |  | 0% → 100% | 2.56d → none |  |  |
| 49 | **Realisierung** | 2016-09-14 08:00 A | 2016-09-28 17:00 → 2016-09-27 12:00 (-1d) | 11d? → 9.5d? | 0% → 10% | -1d → 3d |  |  |
| 51 | **Frontend implementieren** | 2016-09-14 08:00 A | 2016-09-28 17:00 → 2016-09-26 17:00 (-2d) | 11d? → 9d? | 0% → 3% | -1d → 3.5d |  |  |
| 52 | Hauptmaske | 2016-09-16 11:30 → 2016-09-14 08:00 (-2d) | 2016-09-16 14:30 → 2016-09-14 10:30 (-2d) | 0.25d? → 0.31d? |  | 0d → 2.62d | 69 → 50 | resources SS → SS; LN |
| 53 | Hauptmaske Logik | 2016-09-16 14:30 A | 2016-09-19 09:30 → 2016-09-19 10:00 | 0.5d? → 0.56d? | 0% → 44% | 0d → -1d |  | resources SS → SS; LN |
| 54 | Teamverwaltungsansicht | 2016-09-19 09:30 → 2016-09-19 10:00 | 2016-09-19 14:30 → 2016-09-19 15:00 |  |  | 0d → -1d |  | resources SS → SS; LN |
| 55 | Teamverwaltungsansicht Logik | 2016-09-19 14:30 → 2016-09-19 15:00 | 2016-09-20 11:30 → 2016-09-20 12:00 |  |  | 0d → -1d |  | resources SS → SS; LN |
| 56 | To-Do-Ansicht | 2016-09-23 10:00 → 2016-09-20 13:00 (-3d) | 2016-09-23 12:00 → 2016-09-20 15:00 (-3d) |  |  |  | 65 → 55 |  |
| 57 | To-Do-Ansicht Logik | 2016-09-23 13:00 → 2016-09-20 15:00 (-3d) | 2016-09-23 16:00 → 2016-09-21 09:00 (-2d) |  |  |  |  |  |
| 58 | In-Progress-Ansicht | 2016-09-23 16:00 → 2016-09-21 09:00 (-2d) | 2016-09-26 09:00 → 2016-09-21 11:00 (-5d) |  |  |  |  |  |
| 59 | In-Progress-Ansicht Logik | 2016-09-26 09:00 → 2016-09-21 11:00 (-5d) | 2016-09-26 12:00 → 2016-09-21 15:00 (-5d) |  |  |  |  |  |
| 60 | Done-Ansicht | 2016-09-26 13:00 → 2016-09-21 15:00 (-5d) | 2016-09-26 14:00 → 2016-09-21 16:00 (-5d) |  |  |  |  |  |
| 61 | Done-Ansicht Logik | 2016-09-26 14:00 → 2016-09-21 16:00 (-5d) | 2016-09-26 16:00 → 2016-09-22 09:00 (-4d) |  |  |  |  |  |
| 62 | Einzel Ticket-Ansicht | 2016-09-26 16:00 → 2016-09-22 09:00 (-4d) | 2016-09-27 11:00 → 2016-09-22 14:00 (-5d) |  |  |  |  | resources SS → SS; LN |
| 63 | Einzel Ticket-Ansicht Logik | 2016-09-27 11:00 → 2016-09-22 14:00 (-5d) | 2016-09-28 17:00 → 2016-09-23 17:00 (-5d) | 1.62d → 1d |  |  |  | resources SS → SS; LN |
| 64 | Board-Einstellungen | 2016-09-20 11:30 → 2016-09-23 08:00 (+3d) | 2016-09-21 17:00 → 2016-09-23 17:00 (+2d) | 1.56d? → 1d? |  | 0d → -1d | 55 → 63 | constraint none → start no later than 2016-09-23 08:00 |
| 65 | Board-Einstellungen Logik | 2016-09-23 08:00 → 2016-09-26 08:00 (+3d) | 2016-09-23 10:00 → 2016-09-26 11:00 (+3d) | 0.25d? → 0.38d? |  | -1d → 4.12d | 64, 8 → 64 |  |
| 66 | Anmeldebildschirm | 2016-09-14 08:00 → 2016-09-26 08:00 (+12d) | 2016-09-14 09:30 → 2016-09-26 09:30 (+12d) |  |  | 1.44d → 3.5d | 50 → 63 |  |
| 67 | Anmeldebildschirm Logik | 2016-09-14 09:30 → 2016-09-26 09:30 (+12d) | 2016-09-14 13:30 → 2016-09-26 13:30 (+12d) |  |  | 1.44d → 3.5d |  |  |
| 68 | Registrierungsbildschirm | 2016-09-16 08:00 → 2016-09-26 13:30 (+10d) | 2016-09-16 09:30 → 2016-09-26 15:00 (+10d) |  |  | 0d → 3.5d | 67, 6 → 67 |  |
| 69 | Registrierungsbildschirm Logik | 2016-09-16 09:30 → 2016-09-26 15:00 (+10d) | 2016-09-16 11:30 → 2016-09-26 17:00 (+10d) |  |  | 0d → 3.5d |  |  |
| 70 | **Backend implementieren** | 2016-09-14 08:00 A | 2016-09-26 17:00 → 2016-09-27 12:00 (+1d) | 9d? → 9.5d? | 0% → 17% | 0.88d → 0.38d |  |  |
| 73 | Routen implementieren | 2016-09-19 08:00 A | 2016-09-26 17:00 → 2016-09-27 12:00 (+1d) | 5d → 5.5d | 0% → 23% | 0.88d → 0.38d |  |  |
| 74 | **Assets** | 2016-09-27 08:00 → 2016-09-27 13:00 | 2016-09-27 09:00 → 2016-09-27 14:00 |  |  | 0.88d → 0.38d |  |  |
| 75 | Logo erstellen/besorgen | 2016-09-27 08:00 → 2016-09-27 13:00 | 2016-09-27 09:00 → 2016-09-27 14:00 |  |  | 0.88d → 0.38d |  |  |
| 76 | **Präsentation** | 2016-09-28 08:00 → 2016-09-27 14:00 (-1d) |  | 2.5d? → 2.88d? |  |  |  |  |
| 77 | Präsentation erstellen | 2016-09-28 08:00 → 2016-09-27 14:00 (-1d) | 2016-09-28 17:00 → 2016-09-28 14:00 | 1d? → 0.62d? |  | -1d → 0.38d |  |  |

## Version 5 (saved 2016-09-21)

Note of the change: Minor Gantt Updates

Last finish stays 2016-09-30.

Changed:

| ID | Task | Start | Finish | Duration | Complete | Total float |
| --- | --- | --- | --- | --- | --- | --- |
| 1 | **Workshop** |  |  |  | 56% → 63% |  |
| 8 | Workshop 7 |  | 2016-09-22 17:00 → 2016-09-22 08:00 | 1d → 0d |  | 5.5d → 6.5d |
| 49 | **Realisierung** |  | 2016-09-27 12:00 → 2016-09-28 09:00 (+1d) | 9.5d? → 10.12d? | 10% → 9% | 3d → 2.38d |
| 51 | **Frontend implementieren** |  | 2016-09-26 17:00 → 2016-09-28 09:00 (+2d) | 9d? → 10.12d? |  | 3.5d → 2.38d |
| 60 | Done-Ansicht |  | 2016-09-21 16:00 → 2016-09-22 17:00 (+1d) | 0.12d? → 1.12d? |  | -1d → -2.12d |
| 61 | Done-Ansicht Logik | 2016-09-21 16:00 → 2016-09-23 08:00 (+2d) | 2016-09-22 09:00 → 2016-09-23 10:00 (+1d) |  |  | -1d → -2.12d |
| 62 | Einzel Ticket-Ansicht | 2016-09-22 09:00 → 2016-09-23 10:00 (+1d) | 2016-09-22 14:00 → 2016-09-23 15:00 (+1d) |  |  | -1d → -2.12d |
| 63 | Einzel Ticket-Ansicht Logik | 2016-09-22 14:00 → 2016-09-23 15:00 (+1d) | 2016-09-23 17:00 → 2016-09-27 09:00 (+4d) |  |  | -1d → -2.12d |
| 66 | Anmeldebildschirm | 2016-09-26 08:00 → 2016-09-27 09:00 (+1d) | 2016-09-26 09:30 → 2016-09-27 10:30 (+1d) |  |  | 3.5d → 2.38d |
| 67 | Anmeldebildschirm Logik | 2016-09-26 09:30 → 2016-09-27 10:30 (+1d) | 2016-09-26 13:30 → 2016-09-27 14:30 (+1d) |  |  | 3.5d → 2.38d |
| 68 | Registrierungsbildschirm | 2016-09-26 13:30 → 2016-09-27 14:30 (+1d) | 2016-09-26 15:00 → 2016-09-27 16:00 (+1d) |  |  | 3.5d → 2.38d |
| 69 | Registrierungsbildschirm Logik | 2016-09-26 15:00 → 2016-09-27 16:00 (+1d) | 2016-09-26 17:00 → 2016-09-28 09:00 (+2d) |  |  | 3.5d → 2.38d |
| 70 | **Backend implementieren** |  |  |  | 17% → 15% |  |
| 73 | Routen implementieren |  |  | 5.5d → 6.5d | 23% → 19% |  |

## Version 6 (saved 2016-09-22)

Note of the change: Gantt und Gitignore

Last finish stays 2016-09-30.

Changed:

| ID | Task | Start | Finish | Duration | Complete | Total float | Other |
| --- | --- | --- | --- | --- | --- | --- | --- |
| 49 | **Realisierung** |  | 2016-09-28 09:00 → 2016-09-27 17:00 (-1d) | 10.12d? → 10d? | 9% → 8% | 2.38d → 2.5d |  |
| 51 | **Frontend implementieren** |  | 2016-09-28 09:00 → 2016-09-27 17:00 (-1d) | 10.12d? → 10d? | 3% → 2% | 2.38d → 2.5d |  |
| 55 | Teamverwaltungsansicht Logik |  | 2016-09-20 12:00 → 2016-09-21 17:00 (+1d) | 0.75d? → 2.25d? |  | -1d → -4d |  |
| 56 | To-Do-Ansicht | 2016-09-20 13:00 → 2016-09-21 08:00 (+1d) | 2016-09-20 15:00 → 2016-09-21 17:00 (+1d) | 0.25d? → 1d? |  | -1d → -3d | constraint none → start no later than 2016-09-21 08:00 |
| 57 | To-Do-Ansicht Logik | 2016-09-20 15:00 → 2016-09-21 08:00 (+1d) | 2016-09-21 09:00 → 2016-09-21 17:00 | 0.38d? → 1d? |  | -2.12d → -2d | constraint none → start no later than 2016-09-21 08:00 |
| 58 | In-Progress-Ansicht | 2016-09-21 09:00 → 2016-09-22 08:00 (+1d) | 2016-09-21 11:00 → 2016-09-22 10:00 (+1d) |  |  | -2.12d → -2d |  |
| 59 | In-Progress-Ansicht Logik | 2016-09-21 11:00 → 2016-09-22 10:00 (+1d) | 2016-09-21 15:00 → 2016-09-22 14:00 (+1d) |  |  | -2.12d → -2d |  |
| 60 | Done-Ansicht | 2016-09-21 15:00 → 2016-09-22 14:00 (+1d) | 2016-09-22 17:00 → 2016-09-22 16:00 | 1.12d? → 0.25d? |  | -2.12d → -2d |  |
| 61 | Done-Ansicht Logik | 2016-09-23 08:00 → 2016-09-22 16:00 (-1d) | 2016-09-23 10:00 → 2016-09-23 09:00 |  |  | -2.12d → -2d |  |
| 62 | Einzel Ticket-Ansicht | 2016-09-23 10:00 → 2016-09-23 09:00 | 2016-09-23 15:00 → 2016-09-23 14:00 |  |  | -2.12d → -2d |  |
| 63 | Einzel Ticket-Ansicht Logik | 2016-09-23 15:00 → 2016-09-23 14:00 | 2016-09-27 09:00 → 2016-09-26 17:00 (-1d) |  |  | -2.12d → -2d |  |
| 66 | Anmeldebildschirm | 2016-09-27 09:00 → 2016-09-27 08:00 | 2016-09-27 10:30 → 2016-09-27 09:30 |  |  | 2.38d → 2.5d |  |
| 67 | Anmeldebildschirm Logik | 2016-09-27 10:30 → 2016-09-27 09:30 | 2016-09-27 14:30 → 2016-09-27 13:30 |  |  | 2.38d → 2.5d |  |
| 68 | Registrierungsbildschirm | 2016-09-27 14:30 → 2016-09-27 13:30 | 2016-09-27 16:00 → 2016-09-27 15:00 |  |  | 2.38d → 2.5d |  |
| 69 | Registrierungsbildschirm Logik | 2016-09-27 16:00 → 2016-09-27 15:00 | 2016-09-28 09:00 → 2016-09-27 17:00 (-1d) |  |  | 2.38d → 2.5d |  |

## Version 7 (saved 2016-09-27)

Note of the change: Gantt update

Last finish stays 2016-09-30. Complete tasks 33 → 46.

Added:

| ID | Task | Duration | Start | Finish | Predecessors | Resources |
| --- | --- | --- | --- | --- | --- | --- |
| 74 | Routen Umbau: RESTful | 1d | 2016-09-27 13:00 | 2016-09-28 12:00 | 73 | LN |

Changed:

| ID | Task | Start | Finish | Duration | Complete | Total float | Predecessors | Other |
| --- | --- | --- | --- | --- | --- | --- | --- | --- |
| 1 | **Workshop** |  |  |  | 63% → 88% |  |  |  |
| 7 | Workshop 6 | 2016-09-20 08:00 A | 2016-09-20 17:00 A |  | 0% → 100% | 7.5d → none |  |  |
| 8 | Workshop 7 | 2016-09-22 08:00 A | 2016-09-22 08:00 A |  | 0% → 100% | 6.5d → none |  |  |
| 9 | Workshop 8 | 2016-09-27 08:00 A | 2016-09-27 17:00 A |  | 0% → 100% | 2.5d → none |  |  |
| 20 | **Meeting** |  | 2016-09-28 10:00 A |  | 71% → 100% | 2.25d → none |  |  |
| 23 | Meeting 2 | 2016-09-21 08:00 A | 2016-09-21 10:00 A |  | 0% → 100% | 7.25d → none |  |  |
| 24 | Meeting 3 | 2016-09-28 08:00 A | 2016-09-28 10:00 A |  | 0% → 100% | 2.25d → none |  |  |
| 49 | **Realisierung** |  | 2016-09-27 17:00 → 2016-09-28 12:00 (+1d) | 10d? → 10.5d? | 8% → 25% | 2.5d → 2d |  |  |
| 50 | Beginn Realisierung | 2016-09-14 08:00 A | 2016-09-14 08:00 A |  | 0% → 100% | 1.25d → none |  |  |
| 51 | **Frontend implementieren** |  |  |  | 2% → 6% |  |  |  |
| 52 | Hauptmaske |  | 2016-09-14 10:30 → 2016-09-14 17:00 | 0.31d? → 1d? |  | 2.62d → 1.97d |  | resources SS; LN → SS |
| 53 | Hauptmaske Logik |  | 2016-09-19 10:00 → 2016-09-19 13:30 | 0.56d? → 0.88d? | 44% → 32% | -2.12d → -7.31d |  |  |
| 54 | Teamverwaltungsansicht | 2016-09-19 10:00 → 2016-09-19 13:30 | 2016-09-19 15:00 → 2016-09-20 13:30 (+1d) | 0.5d? → 1d? |  | -1d → 7.94d |  | resources SS; LN → SS |
| 55 | Teamverwaltungsansicht Logik | 2016-09-19 15:00 → 2016-09-19 13:30 | 2016-09-21 17:00 → 2016-09-26 15:30 (+5d) | 2.25d? → 5.25d? |  | -4d → -7.31d | 54 → 53 | resources SS; LN → LN [50%] |
| 62 | Einzel Ticket-Ansicht |  | 2016-09-23 14:00 → 2016-09-26 09:00 (+3d) | 0.5d → 1d |  | -2d → -2.5d |  | resources SS; LN → LN |
| 63 | Einzel Ticket-Ansicht Logik | 2016-09-23 14:00 → 2016-09-26 09:00 (+3d) | 2016-09-26 17:00 → 2016-09-27 12:00 (+1d) |  |  | -2d → -2.5d |  |  |
| 66 | Anmeldebildschirm | 2016-09-27 08:00 A | 2016-09-27 09:30 A |  | 0% → 100% | 2.5d → none |  |  |
| 67 | Anmeldebildschirm Logik | 2016-09-27 09:30 A |  |  | 0% → 50% | 2.5d → 2.94d |  |  |
| 68 | Registrierungsbildschirm | 2016-09-27 13:30 A | 2016-09-27 15:00 A |  | 0% → 100% | 2.5d → none |  |  |
| 69 | Registrierungsbildschirm Logik | 2016-09-27 15:00 A |  |  | 0% → 50% |  |  |  |
| 70 | **Backend implementieren** |  | 2016-09-27 12:00 → 2016-09-28 12:00 (+1d) | 9.5d? → 10.5d? | 15% → 55% | 0.38d → 1.88d |  |  |
| 71 | Datenbankmodell umsetzen | 2016-09-14 08:00 A | 2016-09-14 10:00 A |  | 0% → 100% | 1.25d → none |  |  |
| 72 | Entity Framework umsetzen | 2016-09-14 10:00 A | 2016-09-16 17:00 A |  | 0% → 100% | 1.25d → none |  |  |
| 73 | Routen implementieren |  |  |  | 19% → 50% | 0.38d → 1.88d |  |  |
| 75 | **Assets** | 2016-09-27 13:00 → 2016-09-28 13:00 (+1d) | 2016-09-27 14:00 → 2016-09-28 14:00 (+1d) |  |  | 0.38d → 1.88d |  |  |
| 76 | Logo erstellen/besorgen | 2016-09-27 13:00 → 2016-09-28 13:00 (+1d) | 2016-09-27 14:00 → 2016-09-28 14:00 (+1d) |  |  | 0.38d → 1.88d | 73 → 74 |  |
| 77 | **Präsentation** | 2016-09-27 14:00 → 2016-09-29 08:00 A (+2d) | 2016-09-30 12:00 A | 2.88d? → 1.5d? | 0% → 100% | 0d → none |  |  |
| 78 | Präsentation erstellen | 2016-09-27 14:00 → 2016-09-29 08:00 A (+2d) | 2016-09-28 14:00 → 2016-09-29 17:00 A (+1d) |  | 0% → 100% | 0.38d → none | 63, 76 → 76 | constraint start no later than 2016-09-28 08:00 → start no earlier than 2016-09-29 08:00 |
| 79 | Präsentation halten | 2016-09-30 08:00 A | 2016-09-30 12:00 A |  | 0% → 100% | 0d → none |  |  |
| 80 | Modul Ende | 2016-09-30 08:00 A | 2016-09-30 08:00 A |  | 0% → 100% | 0.5d → none |  | was named Projekt Ende |

## Version 8 (saved 2016-09-28)

Note of the change: Gantt final

Last finish 2016-09-30 → 2016-10-14 (+14d). Complete tasks 46 → 54.

Added:

| ID | Task | Duration | Start | Finish | Predecessors | Resources |
| --- | --- | --- | --- | --- | --- | --- |
| 70 | **Frontend Logik** | 6.5d? | 2016-10-03 08:00 | 2016-10-11 12:00 |  |  |
| 80 | **Backend Logik** | 3.12d | 2016-10-11 13:00 | 2016-10-14 14:00 |  |  |
| 81 | Routen implementieren (gemäß Frontend) | 3.12d | 2016-10-11 13:00 | 2016-10-14 14:00 | 79 | LN; SS |

Changed:

| ID | Task | Start | Finish | Duration | Complete | Total float | Predecessors | Other |
| --- | --- | --- | --- | --- | --- | --- | --- | --- |
| 49 | **Realisierung** |  | 2016-09-28 12:00 → 2016-09-28 17:00 A | 10.5d? → 11d? | 25% → 100% | 2d → none |  |  |
| 51 | **Frontend implementieren** |  | 2016-09-27 17:00 → 2016-09-21 14:00 A (-6d) | 10d? → 5.62d? | 6% → 100% | 2.5d → none |  |  |
| 52 | Anmeldebildschirm | 2016-09-27 08:00 A → 2016-09-14 08:00 A (-13d) | 2016-09-27 09:30 A → 2016-09-14 09:30 A (-13d) |  |  |  | 78 → 50 |  |
| 53 | Registrierungsbildschirm | 2016-09-27 13:30 A → 2016-09-14 09:30 A (-13d) | 2016-09-27 15:00 A → 2016-09-14 11:00 A (-13d) |  |  |  | 71 → 52 |  |
| 54 | Teamverwaltungsansicht | 2016-09-19 13:30 → 2016-09-14 11:00 A (-5d) | 2016-09-20 13:30 → 2016-09-15 11:00 A (-5d) |  | 0% → 100% | 7.94d → none | 73 → 53 |  |
| 55 | Hauptmaske | 2016-09-14 08:00 → 2016-09-15 11:00 A (+1d) | 2016-09-14 17:00 → 2016-09-15 17:00 A (+1d) | 1d? → 0.62d? | 0% → 100% | 1.97d → none | 50 → 54 |  |
| 56 | Board-Einstellungen | 2016-09-23 08:00 → 2016-09-16 08:00 A (-7d) | 2016-09-23 17:00 → 2016-09-19 09:00 A (-4d) | 1d? → 1.12d? | 0% → 100% | -2.5d → none | 78 → 55 |  |
| 57 | Einzel Ticket-Ansicht | 2016-09-23 09:00 → 2016-09-19 09:00 A (-4d) | 2016-09-26 09:00 → 2016-09-20 09:00 A (-6d) |  | 0% → 100% | -2.5d → none | 77 → 56 |  |
| 58 | To-Do-Ansicht | 2016-09-21 08:00 → 2016-09-20 09:00 A (-1d) | 2016-09-21 17:00 → 2016-09-21 09:00 A |  | 0% → 100% | -3.81d → none | 74 → 57 |  |
| 59 | In-Progress-Ansicht | 2016-09-22 08:00 → 2016-09-21 09:00 A (-1d) | 2016-09-22 10:00 → 2016-09-21 11:00 A (-1d) |  | 0% → 100% | -2.5d → none | 75 → 58 |  |
| 60 | Done-Ansicht | 2016-09-22 14:00 → 2016-09-21 11:00 A (-1d) | 2016-09-22 16:00 → 2016-09-21 14:00 A (-1d) |  | 0% → 100% | -2.5d → none | 76 → 59 |  |
| 61 | **Backend implementieren** |  | 2016-09-28 12:00 → 2016-09-28 17:00 A | 10.5d? → 11d? | 55% → 100% | 1.88d → none |  |  |
| 64 | Routen implementieren (Prototyp) |  | 2016-09-27 12:00 → 2016-09-26 17:00 A (-1d) | 6.5d → 6d | 50% → 100% | 1.88d → none |  | was named Routen implementieren |
| 65 | Routen Umbau: RESTful | 2016-09-27 13:00 → 2016-09-27 08:00 A | 2016-09-28 12:00 → 2016-09-28 17:00 A | 1d → 2d | 0% → 100% | 1.88d → none |  |  |
| 66 | **Präsentation** |  | 2016-09-30 12:00 A → 2016-09-30 17:00 | 1.5d? → 2d? | 100% → 69% | none → 0d |  |  |
| 67 | Präsentation erstellen |  |  |  |  |  | 83 → 65 |  |
| 68 | Präsentation halten |  | 2016-09-30 12:00 A → 2016-09-30 17:00 | 0.5d → 1d | 100% → 50% | none → 0d |  | constraint start no earlier than 2016-09-30 08:00 → finish no earlier than 2016-09-30 17:00 |
| 71 | Anmeldebildschirm Logik | 2016-09-27 09:30 A → 2016-10-03 08:00 (+6d) | 2016-09-27 13:30 → 2016-10-03 17:00 (+6d) | 0.38d? → 1d? | 50% → 0% | 2.94d → 0d | 52 → 68 | resources SS → SS; LN |
| 72 | Registrierungsbildschirm Logik | 2016-09-27 15:00 A → 2016-10-04 08:00 (+7d) | 2016-09-27 17:00 → 2016-10-04 17:00 (+7d) | 0.25d? → 1d? | 50% → 0% | 2.5d → 0d | 53 → 71 | constraint none → start no later than 2016-10-07 08:00; resources SS → SS; LN |
| 73 | Hauptmaske Logik | 2016-09-16 14:30 A → 2016-10-05 08:00 (+19d) | 2016-09-19 13:30 → 2016-10-05 15:00 (+16d) | 0.88d? → 0.75d? | 32% → 0% | -7.31d → 0d | 55 → 72 |  |
| 74 | Teamverwaltungsansicht Logik | 2016-09-19 13:30 → 2016-10-05 15:00 (+16d) | 2016-09-26 15:30 → 2016-10-06 12:00 (+10d) | 5.25d? → 0.75d? |  | -7.31d → 0d |  | resources LN [50%] → LN; SS |
| 75 | To-Do-Ansicht Logik | 2016-09-21 08:00 → 2016-10-06 13:00 (+15d) | 2016-09-21 17:00 → 2016-10-06 17:00 (+15d) | 1d? → 0.5d? |  | -2.5d → 0d | 58 → 74 | constraint start no later than 2016-09-21 08:00 → none; resources SS → SS; LN |
| 76 | In-Progress-Ansicht Logik | 2016-09-22 10:00 → 2016-10-07 08:00 (+15d) | 2016-09-22 14:00 → 2016-10-07 12:00 (+15d) | 0.38d? → 0.5d? |  | -2.5d → 0d | 59 → 75 | resources SS → SS; LN |
| 77 | Done-Ansicht Logik | 2016-09-22 16:00 → 2016-10-07 13:00 (+15d) | 2016-09-23 09:00 → 2016-10-07 17:00 (+14d) | 0.25d? → 0.5d? |  | -2.5d → 0d | 60 → 76 | resources SS → SS; LN |
| 78 | Einzel Ticket-Ansicht Logik | 2016-09-26 09:00 → 2016-10-10 08:00 (+14d) | 2016-09-27 12:00 → 2016-10-10 17:00 (+13d) | 1d → 0.62d |  | -2.5d → 0d | 57 → 77 |  |
| 79 | Board-Einstellungen Logik | 2016-09-26 08:00 → 2016-10-11 08:00 (+15d) | 2016-09-26 11:00 → 2016-10-11 12:00 (+15d) | 0.38d? → 0.5d? |  | 4.12d → 0d | 56 → 78 | resources SS → SS; LN |
| 82 | **Assets** | 2016-09-28 13:00 → 2016-10-14 14:00 (+16d) | 2016-09-28 14:00 → 2016-10-14 17:00 (+16d) | 0.12d → 0.38d |  | 1.88d → 0d |  |  |
| 83 | Logo erstellen/besorgen | 2016-09-28 13:00 → 2016-10-14 14:00 (+16d) | 2016-09-28 14:00 → 2016-10-14 17:00 (+16d) | 0.12d → 0.38d |  | 1.88d → 0d | 65 → 81 |  |

## Version 9 (saved 2016-09-28)

Note of the change: Gantt

Last finish stays 2016-10-14.

Changed:

| ID | Task | Finish | Duration | Complete | Total float |
| --- | --- | --- | --- | --- | --- |
| 1 | **Workshop** | 2016-09-29 17:00 → 2016-09-29 08:00 | 23d → 22d | 88% → 99% | 11d → 12d |
| 10 | Workshop 9 | 2016-09-29 17:00 → 2016-09-29 08:00 | 1d → 0d |  | 0.5d → 12d |

## Version 10 (saved 2016-09-29)

Note of the change: Gantt

Last finish stays 2016-10-14. Complete tasks 54 → 53.

Changed:

| ID | Task | Finish | Complete | Total float |
| --- | --- | --- | --- | --- |
| 49 | **Realisierung** | 2016-09-28 17:00 A → 2016-09-28 17:00 | 100% → 94% | none → 12d |
| 61 | **Backend implementieren** | 2016-09-28 17:00 A → 2016-09-28 17:00 | 100% → 90% | none → 12d |
| 65 | Routen Umbau: RESTful | 2016-09-28 17:00 A → 2016-09-28 17:00 | 100% → 50% | none → 12d |
